# ProjectPlan-ProgotiSystems-AgraniSchoolPaymentManagement-V-1.1

Schedule from MS Project, 2012-12-01 to 2013-02-06, status date 2012-12-23, A marks actual dates.

## Calendars

- Progoti Systems Calendar: Mon-Thu 09:00-13:00, 14:00-18:00; Fri-Sat off; Sun 09:00-13:00, 14:00-18:00. Exceptions (off unless hours are given): 2012-12-16 to 2017-12-16 (Victory Day, recurring), 2012-12-25 to 2017-12-25 (Christmas, recurring), 2013-01-21 to 2018-01-21 (International Mother language Day, recurring).

## Resources

| Resource |
| --- |
| Md. Afzalur Rashid |
| Azom Shahriar |
| Khadija Ashraf |
| Sajidur Rahman |
| Abu Raihan |
| Kajjal Rekha |
| Nabila Nujhat |

## Schedule

| ID | WBS | Task | Type | Duration | Start | Finish | Predecessors | Complete | Remaining | Baseline start | Baseline finish | Baseline duration | Total slack | Constraint | Resources | Work | Actual work |
| --- | --- | --- | --- | --- | --- | --- | --- | --- | --- | --- | --- | --- | --- | --- | --- | --- | --- |
| 1 | 1 | **Agrani School Payment Management System** |  | 46d | 2012-12-01 09:00 A | 2013-02-06 18:00 |  | 28% | 32.97d | 2012-12-01 09:00 | 2013-02-06 18:00 | 46d | 0d |  |  | 740.6h | 243h |
| 2 | 1.1 | **Web Apps** |  | 26.88d | 2012-12-01 09:00 A | 2013-01-09 17:00 |  | 75% | 6.8d | 2012-12-01 09:00 | 2013-01-09 17:00 | 26.88d | 19.12d |  |  | 230.6h | 203.8h |
| 3 | 1.1.1 | Initiate project & preparation |  | 3d | 2012-12-01 09:00 A | 2012-12-04 18:00 A |  | 100% |  | 2012-12-01 09:00 | 2012-12-04 18:00 | 3d |  | start no earlier than 2012-12-05 09:00 | Azom Shahriar; Khadija Ashraf; Md. Afzalur Rashid [30%] | 55.2h | 55.2h |
| 4 | 1.1.2 | Domain creation & Database schema generation |  | 4d | 2012-12-05 09:00 A | 2012-12-10 18:00 A | 3 | 100% |  | 2012-12-05 09:00 | 2012-12-10 18:00 | 4d |  |  | Khadija Ashraf | 32h | 32h |
| 5 | 1.1.3 | Academic Year/Session Management |  | 1d | 2012-12-11 09:00 A | 2012-12-11 18:00 A | 4 | 100% |  | 2012-12-11 09:00 | 2012-12-11 18:00 | 1d |  |  | Khadija Ashraf | 8h | 8h |
| 6 | 1.1.4 | School Management |  | 1d | 2012-12-12 09:00 A | 2012-12-12 18:00 A | 5 | 100% |  | 2012-12-12 09:00 | 2012-12-12 18:00 | 1d |  |  | Khadija Ashraf | 8h | 8h |
| 7 | 1.1.5 | User Group Management |  | 1d | 2013-01-03 12:48 A | 2013-01-06 12:48 A | 21 | 100% |  | 2013-01-03 12:48 | 2013-01-06 12:48 | 1d |  |  | Khadija Ashraf | 8h | 8h |
| 8 | 1.1.6 | **User Management** |  | 5.62d | 2012-12-13 09:00 A | 2012-12-23 15:00 A |  | 100% |  | 2012-12-13 09:00 | 2012-12-23 15:00 | 5.62d |  |  |  | 8h | 8h |
| 9 | 1.1.6.1 | Tuneup view |  | 3h | 2012-12-23 09:00 A | 2012-12-23 12:00 A | 24 | 100% |  | 2012-12-23 09:00 | 2012-12-23 12:00 | 3h |  | start no earlier than 2012-12-23 09:00 | Khadija Ashraf | 3h | 3h |
| 10 | 1.1.6.2 | Controller |  | 3h | 2012-12-13 09:00 A | 2012-12-13 12:00 A | 6 | 100% |  | 2012-12-13 09:00 | 2012-12-13 12:00 | 3h |  |  | Khadija Ashraf | 3h | 3h |
| 11 | 1.1.6.3 | User Service | milestone | 2h | 2012-12-23 12:00 A | 2012-12-23 15:00 A | 9 | 100% |  | 2012-12-23 12:00 | 2012-12-23 15:00 | 2h |  |  | Khadija Ashraf | 2h | 2h |
| 12 | 1.1.7 | **Authority(Role) Management** |  | 6.62d | 2012-12-13 09:00 A | 2012-12-24 15:00 |  | 75% | 1.66d | 2012-12-13 09:00 | 2012-12-24 15:00 | 6.62d | 9.12d |  |  | 8h | 6h |
| 13 | 1.1.7.1 | View creation |  | 3h | 2012-12-24 09:00 A | 2012-12-24 12:00 A | 11 | 100% |  | 2012-12-24 09:00 | 2012-12-24 12:00 | 3h |  | start no earlier than 2012-12-24 09:00 | Khadija Ashraf | 3h | 3h |
| 14 | 1.1.7.2 | Controller |  | 3h | 2012-12-13 09:00 A | 2012-12-13 12:00 A | 10 | 100% |  | 2012-12-13 09:00 | 2012-12-13 12:00 | 3h |  |  | Khadija Ashraf | 3h | 3h |
| 15 | 1.1.7.3 | Service |  | 2h | 2012-12-24 12:00 | 2012-12-24 15:00 | 13 |  |  | 2012-12-24 12:00 | 2012-12-24 15:00 | 2h | 9.12d |  | Khadija Ashraf | 2h |  |
| 16 | 1.1.8 | Authority Assignment | milestone | 2h | 2012-12-24 15:00 A | 2012-12-24 17:00 A | 12, 8 | 100% |  | 2012-12-24 15:00 | 2012-12-24 17:00 | 2h |  |  | Khadija Ashraf | 2h | 2h |
| 17 | 1.1.9 | Feature Management |  | 2d | 2012-12-24 17:00 A | 2012-12-27 17:00 A | 3, 4, 16 | 100% |  | 2012-12-24 17:00 | 2012-12-27 17:00 | 2d |  |  | Md. Afzalur Rashid [30%] | 4.8h | 4.8h |
| 18 | 1.1.10 | Feature Assigment |  | 2d | 2012-12-27 17:00 A | 2012-12-31 17:00 A | 17 | 100% |  | 2012-12-27 17:00 | 2012-12-31 17:00 | 2d |  |  | Md. Afzalur Rashid [30%] | 4.8h | 4.8h |
| 19 | 1.1.11 | Class Management |  | 4h | 2012-12-17 09:00 A | 2012-12-17 13:00 A | 14 | 100% |  | 2012-12-17 09:00 | 2012-12-17 13:00 | 4h |  |  | Khadija Ashraf | 4h | 4h |
| 20 | 1.1.12 | Section Management |  | 3h | 2012-12-18 09:00 A | 2012-12-18 12:00 A | 19 | 100% |  | 2012-12-18 09:00 | 2012-12-18 12:00 | 3h |  |  | Khadija Ashraf | 3h | 3h |
| 21 | 1.1.13 | Subject Group management |  | 1d | 2013-01-02 12:48 | 2013-01-03 12:48 | 26 |  |  | 2013-01-02 12:48 | 2013-01-03 12:48 | 1d | 23.52d |  | Khadija Ashraf | 8h |  |
| 22 | 1.1.14 | **Fees Profile Management** |  | 11.47d | 2012-12-17 09:00 A | 2013-01-02 12:48 A |  | 100% |  | 2012-12-17 09:00 | 2013-01-02 12:48 | 11.47d |  |  |  | 28h | 28h |
| 23 | 1.1.14.1 | Fees Type |  | 4h | 2012-12-19 09:00 A | 2012-12-19 13:00 A | 20 | 100% |  | 2012-12-19 09:00 | 2012-12-19 13:00 | 4h |  |  | Khadija Ashraf | 4h | 4h |
| 24 | 1.1.14.2 | Fees Rule |  | 4h | 2012-12-19 09:00 A | 2012-12-19 13:00 A | 23 | 100% |  | 2012-12-19 09:00 | 2012-12-19 13:00 | 4h |  |  | Khadija Ashraf | 4h | 4h |
| 25 | 1.1.14.3 | Fees Profile |  | 4h | 2012-12-20 09:00 A | 2012-12-20 13:00 A | 24 | 100% |  | 2012-12-20 09:00 | 2012-12-20 13:00 | 4h |  |  | Khadija Ashraf | 4h | 4h |
| 26 | 1.1.14.4 | Fees Profile Allocation |  | 2d | 2012-12-17 09:00 A | 2013-01-02 12:48 A | 29 | 100% |  | 2012-12-17 09:00 | 2013-01-02 12:48 | 2d |  |  | Khadija Ashraf | 16h | 16h |

| ID | WBS | Task | Type | Duration | Start | Finish | Predecessors | Complete | Remaining | Baseline start | Baseline finish | Baseline duration | Total slack | Free slack | Constraint | Resources | Work | Actual work |
| --- | --- | --- | --- | --- | --- | --- | --- | --- | --- | --- | --- | --- | --- | --- | --- | --- | --- | --- |
| 27 | 1.1.15 | **Student Management** |  | 11d | 2012-12-24 17:00 A | 2013-01-09 17:00 |  | 36% | 7d | 2012-12-24 17:00 | 2013-01-09 17:00 | 11d | 9.12d |  |  |  | 48.8h | 32h |
| 28 | 1.1.15.1 | Student Registration | milestone | 2d | 2012-12-24 17:00 A | 2012-12-27 17:00 A | 16 | 100% |  | 2012-12-24 17:00 | 2012-12-27 17:00 | 2d |  |  |  | Khadija Ashraf | 16h | 16h |
| 29 | 1.1.15.2 | Class,Section,Fees Profile assignment | milestone | 2d | 2012-12-27 17:00 A | 2012-12-31 17:00 A | 28 | 100% |  | 2012-12-27 17:00 | 2012-12-31 17:00 | 2d |  |  |  | Khadija Ashraf | 16h | 16h |
| 30 | 1.1.15.3 | **Migration** |  | 7d | 2012-12-31 17:00 | 2013-01-09 17:00 |  |  |  | 2012-12-31 17:00 | 2013-01-09 17:00 | 7d | 9.12d |  |  |  | 16.8h |  |
| 31 | 1.1.15.3.1 | Individual Student migration |  | 2d | 2012-12-31 17:00 | 2013-01-02 17:00 | 18, 29 |  |  | 2012-12-31 17:00 | 2013-01-02 17:00 | 2d | 9.12d | 0d |  | Md. Afzalur Rashid [30%] | 4.8h |  |
| 32 | 1.1.15.3.2 | Groupwise migration |  | 5d | 2013-01-02 17:00 | 2013-01-09 17:00 | 31 |  |  | 2013-01-02 17:00 | 2013-01-09 17:00 | 5d | 9.12d | 0d |  | Md. Afzalur Rashid [30%] | 12h |  |
| 33 | 1.2 | **RESTFul Webservice Management** |  | 13d | 2012-12-18 09:00 A | 2013-01-06 18:00 |  | 38% | 8.1d | 2012-12-18 09:00 | 2013-01-06 18:00 | 13d | 0d |  |  |  | 104h | 39.2h |
| 34 | 1.2.1 | Setup project and Preparation |  | 3d | 2012-12-18 09:00 A | 2012-12-20 18:00 A |  | 100% |  | 2012-12-18 09:00 | 2012-12-20 18:00 | 3d |  |  | start no earlier than 2012-12-18 09:00 | Azom Shahriar | 24h | 24h |
| 35 | 1.2.2 | Webservice for tuition fees payment |  | 2d | 2012-12-23 09:00 A | 2012-12-24 18:00 | 34 | 50% | 1d | 2012-12-23 09:00 | 2012-12-24 18:00 | 2d | 0.9d | 0d |  | Azom Shahriar | 16h | 8h |
| 36 | 1.2.3 | Web service for other fees payment | milestone | 1d | 2012-12-26 09:00 A | 2012-12-26 18:00 | 35 | 40% | 0.6d | 2012-12-26 09:00 | 2012-12-26 18:00 | 1d | 0.5d | 0d |  | Azom Shahriar | 8h | 3.2h |
| 37 | 1.2.4 | Fine management |  | 2d | 2012-12-27 09:00 A | 2012-12-30 18:00 | 36 | 25% | 1.5d | 2012-12-27 09:00 | 2012-12-30 18:00 | 2d | 0d |  |  | Azom Shahriar | 16h | 4h |
| 38 | 1.2.5 | Web service for external component / transaction report |  | 5d | 2012-12-31 09:00 | 2013-01-06 18:00 | 37 |  |  | 2012-12-31 09:00 | 2013-01-06 18:00 | 5d | 0d |  |  | Azom Shahriar | 40h |  |
| 39 | 1.3 | **Dashboard management** |  | 15d | 2013-01-16 09:00 | 2013-02-06 18:00 |  |  |  | 2013-01-16 09:00 | 2013-02-06 18:00 | 15d | 0d |  |  |  | 120h |  |
| 40 | 1.3.1 | CSS & Layout Management |  | 3d | 2013-01-16 09:00 | 2013-01-20 18:00 | 50 |  |  | 2013-01-16 09:00 | 2013-01-20 18:00 | 3d | 0d |  |  | Azom Shahriar | 24h |  |
| 41 | 1.3.2 | Admin dashboard amanagement |  | 2d | 2013-01-22 09:00 | 2013-01-23 18:00 | 40 |  |  | 2013-01-22 09:00 | 2013-01-23 18:00 | 2d | 0d |  |  | Azom Shahriar | 16h |  |
| 42 | 1.3.3 | Teacher & Employee Dashboard |  | 2d | 2013-01-24 09:00 | 2013-01-27 18:00 | 41 |  |  | 2013-01-24 09:00 | 2013-01-27 18:00 | 2d | 0d |  |  | Azom Shahriar | 16h |  |
| 43 | 1.3.4 | Clerk dashboard |  | 1d | 2013-01-28 09:00 | 2013-01-28 18:00 | 42 |  |  | 2013-01-28 09:00 | 2013-01-28 18:00 | 1d | 0d |  |  | Azom Shahriar | 8h |  |
| 44 | 1.3.5 | Generic Dashboard |  | 4d | 2013-01-29 09:00 | 2013-02-03 18:00 | 43 |  |  | 2013-01-29 09:00 | 2013-02-03 18:00 | 4d | 0d |  |  | Azom Shahriar | 32h |  |
| 45 | 1.3.6 | Dashboard Customization |  | 3d | 2013-02-04 09:00 | 2013-02-06 18:00 | 44 |  |  | 2013-02-04 09:00 | 2013-02-06 18:00 | 3d | 0d |  |  | Azom Shahriar | 24h |  |
| 46 | 1.4 | **Reports** |  | 7d | 2013-01-07 09:00 | 2013-01-15 18:00 |  |  |  | 2013-01-07 09:00 | 2013-01-15 18:00 | 7d | 0d |  |  |  | 56h |  |
| 47 | 1.4.1 | Generic Report based on Group,Section,Class,Student, fees type and duration | milestone | 4d | 2013-01-07 09:00 | 2013-01-10 18:00 | 38 |  |  | 2013-01-07 09:00 | 2013-01-10 18:00 | 4d | 0d |  |  | Azom Shahriar | 32h |  |
| 48 | 1.4.2 | Monthwise fees collection report |  | 1d | 2013-01-13 09:00 | 2013-01-13 18:00 | 47 |  |  | 2013-01-13 09:00 | 2013-01-13 18:00 | 1d | 0d |  |  | Azom Shahriar | 8h |  |
| 49 | 1.4.3 | Monthwise due report |  | 1d | 2013-01-14 09:00 | 2013-01-14 18:00 | 48 |  |  | 2013-01-14 09:00 | 2013-01-14 18:00 | 1d | 0d |  |  | Azom Shahriar | 8h |  |
| 50 | 1.4.4 | Student Registration Report |  | 1d | 2013-01-15 09:00 | 2013-01-15 18:00 | 49 |  |  | 2013-01-15 09:00 | 2013-01-15 18:00 | 1d | 0d |  |  | Azom Shahriar | 8h |  |
| 51 | 1.5 | Design customization & CSS Implementation |  | 10d | 2013-01-09 17:00 | 2013-01-24 17:00 | 32 |  |  | 2013-01-09 17:00 | 2013-01-24 17:00 | 10d | 9.12d |  |  | Md. Afzalur Rashid [30%] | 24h |  |

| ID | WBS | Task | Duration | Start | Finish | Predecessors | Baseline start | Baseline finish | Baseline duration | Total slack | Free slack | Resources | Work |
| --- | --- | --- | --- | --- | --- | --- | --- | --- | --- | --- | --- | --- | --- |
| 52 | 1.6 | **Testing** | 19.75d | 2012-12-24 17:00 | 2013-01-23 15:00 |  | 2012-12-24 17:00 | 2013-01-23 15:00 | 19.75d | 10.38d |  |  | 206h |
| 53 | 1.6.1 | **Prepare Test Cases** | 19.75d | 2012-12-24 17:00 | 2013-01-23 15:00 |  | 2012-12-24 17:00 | 2013-01-23 15:00 | 19.75d | 10.38d |  |  | 134h |
| 54 | 1.6.1.1 | **Prepare Test Case for ACL** | 1.75d | 2012-12-24 17:00 | 2012-12-27 15:00 |  | 2012-12-24 17:00 | 2012-12-27 15:00 | 1.75d | 10.38d | 0d |  | 14h |
| 55 | 1.6.1.1.1 | Test case for User | 3h | 2012-12-24 17:00 | 2012-12-26 11:00 | 16 | 2012-12-24 17:00 | 2012-12-26 11:00 | 3h | 10.38d | 0d | Kajjal Rekha | 3h |
| 56 | 1.6.1.1.2 | Test case for Authority | 3h | 2012-12-26 11:00 | 2012-12-26 15:00 | 55 | 2012-12-26 11:00 | 2012-12-26 15:00 | 3h | 10.38d | 0d | Kajjal Rekha | 3h |
| 57 | 1.6.1.1.3 | Test Case for login & authentication | 1d | 2012-12-26 15:00 | 2012-12-27 15:00 | 56 | 2012-12-26 15:00 | 2012-12-27 15:00 | 1d | 10.38d |  | Kajjal Rekha | 8h |
| 58 | 1.6.1.2 | **Prepare Test Case for School Management** | 2d | 2012-12-30 15:00 | 2013-01-01 15:00 |  | 2012-12-30 15:00 | 2013-01-01 15:00 | 2d | 10.38d | 0d |  | 16h |
| 59 | 1.6.1.2.1 | Test case for academic year/session | 1h | 2012-12-30 15:00 | 2012-12-30 16:00 | 79 | 2012-12-30 15:00 | 2012-12-30 16:00 | 1h | 10.38d | 0d | Kajjal Rekha | 1h |
| 60 | 1.6.1.2.2 | Test Case for School | 2h | 2012-12-30 16:00 | 2012-12-30 18:00 | 59 | 2012-12-30 16:00 | 2012-12-30 18:00 | 2h | 10.38d | 0d | Kajjal Rekha | 2h |
| 61 | 1.6.1.2.3 | Test Case for Fees profile | 5h | 2012-12-31 09:00 | 2012-12-31 15:00 | 60 | 2012-12-31 09:00 | 2012-12-31 15:00 | 5h | 10.38d | 0d | Kajjal Rekha | 5h |
| 62 | 1.6.1.2.4 | Test Case for Student Registration | 1d | 2012-12-31 15:00 | 2013-01-01 15:00 | 61 | 2012-12-31 15:00 | 2013-01-01 15:00 | 1d | 10.38d |  | Kajjal Rekha | 8h |
| 63 | 1.6.1.3 | **Prepare Test Cases for Web Service** | 3d | 2013-01-03 15:00 | 2013-01-08 15:00 |  | 2013-01-03 15:00 | 2013-01-08 15:00 | 3d | 10.38d | 0d |  | 24h |
| 64 | 1.6.1.3.1 | Test Case for Tuition fees web service | 1d | 2013-01-03 15:00 | 2013-01-06 15:00 | 80 | 2013-01-03 15:00 | 2013-01-06 15:00 | 1d | 10.38d | 0d | Kajjal Rekha | 8h |
| 65 | 1.6.1.3.2 | Test Case for Exam fee & other web service | 1d | 2013-01-06 15:00 | 2013-01-07 15:00 | 64 | 2013-01-06 15:00 | 2013-01-07 15:00 | 1d | 10.38d | 0d | Kajjal Rekha | 8h |
| 66 | 1.6.1.3.3 | Test Case for external usagable web service | 1d | 2013-01-07 15:00 | 2013-01-08 15:00 | 65 | 2013-01-07 15:00 | 2013-01-08 15:00 | 1d | 10.38d | 0d | Kajjal Rekha | 8h |
| 67 | 1.6.1.4 | **Prepare Test Case for reports** | 1d | 2013-01-08 15:00 | 2013-01-09 15:00 |  | 2013-01-08 15:00 | 2013-01-09 15:00 | 1d | 10.38d | 2d |  | 8h |
| 68 | 1.6.1.4.1 | Test Case for generic reports | 3h | 2013-01-08 15:00 | 2013-01-08 18:00 | 66 | 2013-01-08 15:00 | 2013-01-08 18:00 | 3h | 10.38d | 0d | Kajjal Rekha | 3h |
| 69 | 1.6.1.4.2 | Test case for teacher wise reports | 2h | 2013-01-09 09:00 | 2013-01-09 11:00 | 68 | 2013-01-09 09:00 | 2013-01-09 11:00 | 2h | 10.38d | 0d | Kajjal Rekha | 2h |
| 70 | 1.6.1.4.3 | Test Case for Student Registration Report | 3h | 2013-01-09 11:00 | 2013-01-09 15:00 | 69 | 2013-01-09 11:00 | 2013-01-09 15:00 | 3h | 10.38d | 0d | Kajjal Rekha | 3h |
| 71 | 1.6.1.5 | **Prepare Test Case for Dashboard** | 4d | 2013-01-09 15:00 | 2013-01-15 15:00 |  | 2013-01-09 15:00 | 2013-01-15 15:00 | 4d | 10.38d |  |  | 32h |
| 72 | 1.6.1.5.1 | Test Case for Admin Dashboard | 3h | 2013-01-09 15:00 | 2013-01-09 18:00 | 70 | 2013-01-09 15:00 | 2013-01-09 18:00 | 3h | 10.38d | 0d | Kajjal Rekha | 3h |
| 73 | 1.6.1.5.2 | Test Case for Teacher Dashboard | 3h | 2013-01-10 09:00 | 2013-01-10 12:00 | 72 | 2013-01-10 09:00 | 2013-01-10 12:00 | 3h | 10.38d | 0d | Kajjal Rekha | 3h |
| 74 | 1.6.1.5.3 | Test Case for Clerk Dahsboard | 2h | 2013-01-10 12:00 | 2013-01-10 15:00 | 73 | 2013-01-10 12:00 | 2013-01-10 15:00 | 2h | 10.38d | 0d | Kajjal Rekha | 2h |
| 75 | 1.6.1.5.4 | Test Case for Generic Dashboard | 1d | 2013-01-10 15:00 | 2013-01-13 15:00 | 74 | 2013-01-10 15:00 | 2013-01-13 15:00 | 1d | 10.38d | 0d | Kajjal Rekha | 8h |
| 76 | 1.6.1.5.5 | Test Case for Dashboard customization | 2d | 2013-01-13 15:00 | 2013-01-15 15:00 | 75 | 2013-01-13 15:00 | 2013-01-15 15:00 | 2d | 10.38d | 0d | Kajjal Rekha | 16h |
| 77 | 1.6.1.6 | Prepare Test Case for User Interface | 5d | 2013-01-15 15:00 | 2013-01-23 15:00 | 76 | 2013-01-15 15:00 | 2013-01-23 15:00 | 5d | 10.38d |  | Kajjal Rekha | 40h |

| ID | WBS | Task | Duration | Start | Finish | Predecessors | Baseline start | Baseline finish | Baseline duration | Total slack | Free slack | Resources | Work |
| --- | --- | --- | --- | --- | --- | --- | --- | --- | --- | --- | --- | --- | --- |
| 78 | 1.6.2 | **Perform Test for Phase** | 14d | 2012-12-27 15:00 | 2013-01-16 15:00 |  | 2012-12-27 15:00 | 2013-01-16 15:00 | 14d | 10.38d |  |  | 72h |
| 79 | 1.6.2.1 | Perform Test for ACL | 1d | 2012-12-27 15:00 | 2012-12-30 15:00 | 54 | 2012-12-27 15:00 | 2012-12-30 15:00 | 1d | 10.38d | 0d | Kajjal Rekha | 8h |
| 80 | 1.6.2.2 | Perform Test for School Management | 2d | 2013-01-01 15:00 | 2013-01-03 15:00 | 58 | 2013-01-01 15:00 | 2013-01-03 15:00 | 2d | 10.38d | 0d | Kajjal Rekha | 16h |
| 81 | 1.6.2.3 | Perform Test for Web Service | 3d | 2013-01-08 15:00 | 2013-01-13 15:00 | 63 | 2013-01-08 15:00 | 2013-01-13 15:00 | 3d | 14.38d | 0d | Nabila Nujhat | 24h |
| 82 | 1.6.2.4 | Perform Test For report | 3d | 2013-01-13 15:00 | 2013-01-16 15:00 | 67, 81 | 2013-01-13 15:00 | 2013-01-16 15:00 | 3d | 14.38d |  | Nabila Nujhat | 24h |
