# ProjectPlan-ProgotiSystems-AgraniSchoolPaymentManagement-V-1.2

Schedule from MS Project, 2012-12-01 to 2013-02-06, status date 2012-12-23, A marks actual dates.

## Calendars

- Progoti Systems Calendar: Mon-Thu 09:00-13:00, 14:00-18:00; Fri-Sat off; Sun 09:00-13:00, 14:00-18:00. Exceptions (off unless hours are given): 2012-12-16 to 2017-12-16 (Victory Day, recurring), 2012-12-25 to 2017-12-25 (Christmas, recurring), 2013-01-21 to 2018-01-21 (International Mother language Day, recurring).

## Resources

| Resource |
| --- |
| Md. Afzalur Rashid |
| Azom Shahriar |
| Khadija Ashraf |
| Sajidur Rahman |
| Abu Raihan |
| Kajjal Rekha |
| Nabila Nujhat |

## Schedule

| ID | WBS | Task | Type | Duration | Start | Finish | Predecessors | Complete | Remaining | Baseline start | Baseline finish | Baseline duration | Total slack | Constraint | Resources | Work | Actual work |
| --- | --- | --- | --- | --- | --- | --- | --- | --- | --- | --- | --- | --- | --- | --- | --- | --- | --- |
| 1 | 1 | **Agrani School Payment Management System** |  | 46d | 2012-12-01 A | 2013-02-06 |  | 33% | 30.96d | 2012-12-01 | 2013-02-06 | 46d | 0d |  |  | 755h | 286.2h |
| 2 | 1.1 | **Web Apps** |  | 26.88d | 2012-12-01 A | 2013-01-09 |  | 75% | 6.8d | 2012-12-01 | 2013-01-09 | 26.88d | 19.12d |  |  | 230.6h | 203.8h |
| 3 | 1.1.1 | Initiate project & preparation |  | 3d | 2012-12-01 A | 2012-12-04 A |  | 100% |  | 2012-12-01 | 2012-12-04 | 3d |  | start no earlier than 2012-12-05 | Azom Shahriar; Khadija Ashraf; Md. Afzalur Rashid [30%] | 55.2h | 55.2h |
| 4 | 1.1.2 | Domain creation & Database schema generation |  | 4d | 2012-12-05 A | 2012-12-10 A | 3 | 100% |  | 2012-12-05 | 2012-12-10 | 4d |  |  | Khadija Ashraf | 32h | 32h |
| 5 | 1.1.3 | Academic Year/Session Management |  | 1d | 2012-12-11 A | 2012-12-11 A | 4 | 100% |  | 2012-12-11 | 2012-12-11 | 1d |  |  | Khadija Ashraf | 8h | 8h |
| 6 | 1.1.4 | School Management |  | 1d | 2012-12-12 A | 2012-12-12 A | 5 | 100% |  | 2012-12-12 | 2012-12-12 | 1d |  |  | Khadija Ashraf | 8h | 8h |
| 7 | 1.1.5 | User Group Management |  | 1d | 2013-01-03 A | 2013-01-06 A | 21 | 100% |  | 2013-01-03 | 2013-01-06 | 1d |  |  | Khadija Ashraf | 8h | 8h |
| 8 | 1.1.6 | **User Management** |  | 5.62d | 2012-12-13 A | 2012-12-23 A |  | 100% |  | 2012-12-13 | 2012-12-23 | 5.62d |  |  |  | 8h | 8h |
| 9 | 1.1.6.1 | Tuneup view |  | 3h | 2012-12-23 A | 2012-12-23 A | 24 | 100% |  | 2012-12-23 | 2012-12-23 | 3h |  | start no earlier than 2012-12-23 | Khadija Ashraf | 3h | 3h |
| 10 | 1.1.6.2 | Controller |  | 3h | 2012-12-13 A | 2012-12-13 A | 6 | 100% |  | 2012-12-13 | 2012-12-13 | 3h |  |  | Khadija Ashraf | 3h | 3h |
| 11 | 1.1.6.3 | User Service | milestone | 2h | 2012-12-23 A | 2012-12-23 A | 9 | 100% |  | 2012-12-23 | 2012-12-23 | 2h |  |  | Khadija Ashraf | 2h | 2h |
| 12 | 1.1.7 | **Authority(Role) Management** |  | 6.62d | 2012-12-13 A | 2012-12-24 |  | 75% | 1.66d | 2012-12-13 | 2012-12-24 | 6.62d | 30.38d |  |  | 8h | 6h |
| 13 | 1.1.7.1 | View creation |  | 3h | 2012-12-24 A | 2012-12-24 A | 11 | 100% |  | 2012-12-24 | 2012-12-24 | 3h |  | start no earlier than 2012-12-24 | Khadija Ashraf | 3h | 3h |
| 14 | 1.1.7.2 | Controller |  | 3h | 2012-12-13 A | 2012-12-13 A | 10 | 100% |  | 2012-12-13 | 2012-12-13 | 3h |  |  | Khadija Ashraf | 3h | 3h |
| 15 | 1.1.7.3 | Service |  | 2h | 2012-12-24 | 2012-12-24 | 13 |  |  | 2012-12-24 | 2012-12-24 | 2h | 30.38d |  | Khadija Ashraf | 2h |  |
| 16 | 1.1.8 | Authority Assignment | milestone | 2h | 2012-12-24 A | 2012-12-24 A | 12, 8 | 100% |  | 2012-12-24 | 2012-12-24 | 2h |  |  | Khadija Ashraf | 2h | 2h |
| 17 | 1.1.9 | Feature Management |  | 2d | 2012-12-24 A | 2012-12-27 A | 3, 4, 16 | 100% |  | 2012-12-24 | 2012-12-27 | 2d |  |  | Md. Afzalur Rashid [30%] | 4.8h | 4.8h |
| 18 | 1.1.10 | Feature Assigment |  | 2d | 2012-12-27 A | 2012-12-31 A | 17 | 100% |  | 2012-12-27 | 2012-12-31 | 2d |  |  | Md. Afzalur Rashid [30%] | 4.8h | 4.8h |
| 19 | 1.1.11 | Class Management |  | 4h | 2012-12-17 A | 2012-12-17 A | 14 | 100% |  | 2012-12-17 | 2012-12-17 | 4h |  |  | Khadija Ashraf | 4h | 4h |
| 20 | 1.1.12 | Section Management |  | 3h | 2012-12-18 A | 2012-12-18 A | 19 | 100% |  | 2012-12-18 | 2012-12-18 | 3h |  |  | Khadija Ashraf | 3h | 3h |
| 21 | 1.1.13 | Subject Group management |  | 1d | 2013-01-02 | 2013-01-03 | 26 |  |  | 2013-01-02 | 2013-01-03 | 1d | 23.52d |  | Khadija Ashraf | 8h |  |
| 22 | 1.1.14 | **Fees Profile Management** |  | 11.47d | 2012-12-17 A | 2013-01-02 A |  | 100% |  | 2012-12-17 | 2013-01-02 | 11.47d |  |  |  | 28h | 28h |
| 23 | 1.1.14.1 | Fees Type |  | 4h | 2012-12-19 A | 2012-12-19 A | 20 | 100% |  | 2012-12-19 | 2012-12-19 | 4h |  |  | Khadija Ashraf | 4h | 4h |
| 24 | 1.1.14.2 | Fees Rule |  | 4h | 2012-12-19 A | 2012-12-19 A | 23 | 100% |  | 2012-12-19 | 2012-12-19 | 4h |  |  | Khadija Ashraf | 4h | 4h |
| 25 | 1.1.14.3 | Fees Profile |  | 4h | 2012-12-20 A | 2012-12-20 A | 24 | 100% |  | 2012-12-20 | 2012-12-20 | 4h |  |  | Khadija Ashraf | 4h | 4h |
| 26 | 1.1.14.4 | Fees Profile Allocation |  | 2d | 2012-12-17 A | 2013-01-02 A | 29 | 100% |  | 2012-12-17 | 2013-01-02 | 2d |  |  | Khadija Ashraf | 16h | 16h |

| ID | WBS | Task | Type | Duration | Start | Finish | Predecessors | Complete | Remaining | Baseline start | Baseline finish | Baseline duration | Total slack | Free slack | Constraint | Resources | Work | Actual work |
| --- | --- | --- | --- | --- | --- | --- | --- | --- | --- | --- | --- | --- | --- | --- | --- | --- | --- | --- |
| 27 | 1.1.15 | **Student Management** |  | 11d | 2012-12-24 A | 2013-01-09 |  | 36% | 7d | 2012-12-24 | 2013-01-09 | 11d | 16.12d |  |  |  | 48.8h | 32h |
| 28 | 1.1.15.1 | Student Registration | milestone | 2d | 2012-12-24 A | 2012-12-27 A | 16 | 100% |  | 2012-12-24 | 2012-12-27 | 2d |  |  |  | Khadija Ashraf | 16h | 16h |
| 29 | 1.1.15.2 | Class,Section,Fees Profile assignment | milestone | 2d | 2012-12-27 A | 2012-12-31 A | 28 | 100% |  | 2012-12-27 | 2012-12-31 | 2d |  |  |  | Khadija Ashraf | 16h | 16h |
| 30 | 1.1.15.3 | **Migration** |  | 7d | 2012-12-31 | 2013-01-09 |  |  |  | 2012-12-31 | 2013-01-09 | 7d | 16.12d |  |  |  | 16.8h |  |
| 31 | 1.1.15.3.1 | Individual Student migration |  | 2d | 2012-12-31 | 2013-01-02 | 18, 29 |  |  | 2012-12-31 | 2013-01-02 | 2d | 16.12d | 0d |  | Md. Afzalur Rashid [30%] | 4.8h |  |
| 32 | 1.1.15.3.2 | Groupwise migration |  | 5d | 2013-01-02 | 2013-01-09 | 31 |  |  | 2013-01-02 | 2013-01-09 | 5d | 16.12d | 0d |  | Md. Afzalur Rashid [30%] | 12h |  |
| 33 | 1.2 | **RESTFul Webservice Management** |  | 13d | 2012-12-18 A | 2013-01-06 |  | 62% | 5d | 2012-12-18 | 2013-01-06 | 13d | 2d |  |  |  | 104h | 64h |
| 34 | 1.2.1 | Setup project and Preparation |  | 3d | 2012-12-18 A | 2012-12-20 A |  | 100% |  | 2012-12-18 | 2012-12-20 | 3d |  |  | start no earlier than 2012-12-18 | Azom Shahriar | 24h | 24h |
| 35 | 1.2.2 | Webservice for tuition fees payment |  | 2d | 2012-12-23 A | 2012-12-24 A | 34 | 100% |  | 2012-12-23 | 2012-12-24 | 2d |  |  |  | Azom Shahriar | 16h | 16h |
| 36 | 1.2.3 | Web service for other fees payment | milestone | 1d | 2012-12-26 A | 2012-12-26 A | 35 | 100% |  | 2012-12-26 | 2012-12-26 | 1d |  |  |  | Azom Shahriar | 8h | 8h |
| 37 | 1.2.4 | Fine management |  | 2d | 2012-12-27 A | 2012-12-30 A | 36 | 100% |  | 2012-12-27 | 2012-12-30 | 2d |  |  |  | Azom Shahriar | 16h | 16h |
| 38 | 1.2.5 | Web service for external component / transaction report |  | 5d | 2012-12-31 | 2013-01-06 | 37 |  |  | 2012-12-31 | 2013-01-06 | 5d | 2d | 0d |  | Azom Shahriar | 40h |  |
| 39 | 1.3 | **Dashboard management** |  | 15d | 2013-01-16 | 2013-02-06 |  |  |  | 2013-01-16 | 2013-02-06 | 15d | 0d |  |  |  | 120h |  |
| 40 | 1.3.1 | CSS & Layout Management |  | 3d | 2013-01-16 | 2013-01-20 | 50 |  |  | 2013-01-16 | 2013-01-20 | 3d | 0d |  |  | Azom Shahriar | 24h |  |
| 41 | 1.3.2 | Admin dashboard amanagement |  | 2d | 2013-01-22 | 2013-01-23 | 40 |  |  | 2013-01-22 | 2013-01-23 | 2d | 0d |  |  | Azom Shahriar | 16h |  |
| 42 | 1.3.3 | Teacher & Employee Dashboard |  | 2d | 2013-01-24 | 2013-01-27 | 41 |  |  | 2013-01-24 | 2013-01-27 | 2d | 0d |  |  | Azom Shahriar | 16h |  |
| 43 | 1.3.4 | Clerk dashboard |  | 1d | 2013-01-28 | 2013-01-28 | 42 |  |  | 2013-01-28 | 2013-01-28 | 1d | 0d |  |  | Azom Shahriar | 8h |  |
| 44 | 1.3.5 | Generic Dashboard |  | 4d | 2013-01-29 | 2013-02-03 | 43 |  |  | 2013-01-29 | 2013-02-03 | 4d | 0d |  |  | Azom Shahriar | 32h |  |
| 45 | 1.3.6 | Dashboard Customization |  | 3d | 2013-02-04 | 2013-02-06 | 44 |  |  | 2013-02-04 | 2013-02-06 | 3d | 0d |  |  | Azom Shahriar | 24h |  |
| 46 | 1.4 | **Reports** |  | 7d | 2013-01-07 A | 2013-01-15 |  | 29% | 5d | 2013-01-07 | 2013-01-15 | 7d | 0d |  |  |  | 56h | 16h |
| 47 | 1.4.1 | Generic Report based on Group,Section,Class,Student, fees type and duration | milestone | 4d | 2013-01-07 A | 2013-01-10 | 38 | 50% | 2d | 2013-01-07 | 2013-01-10 | 4d | 0d |  |  | Azom Shahriar | 32h | 16h |
| 48 | 1.4.2 | Monthwise fees collection report |  | 1d | 2013-01-13 | 2013-01-13 | 47 |  |  | 2013-01-13 | 2013-01-13 | 1d | 0d |  |  | Azom Shahriar | 8h |  |
| 49 | 1.4.3 | Monthwise due report |  | 1d | 2013-01-14 | 2013-01-14 | 48 |  |  | 2013-01-14 | 2013-01-14 | 1d | 0d |  |  | Azom Shahriar | 8h |  |
| 50 | 1.4.4 | Student Registration Report |  | 1d | 2013-01-15 | 2013-01-15 | 49 |  |  | 2013-01-15 | 2013-01-15 | 1d | 0d |  |  | Azom Shahriar | 8h |  |

| ID | WBS | Task | Duration | Start | Finish | Predecessors | Remaining | Baseline start | Baseline finish | Baseline duration | Total slack | Free slack | Constraint | Resources | Work | Actual work |
| --- | --- | --- | --- | --- | --- | --- | --- | --- | --- | --- | --- | --- | --- | --- | --- | --- |
| 51 | 1.5 | **Design customization & CSS Implementation** | 3d | 2013-01-09 A | 2013-01-14 | 32 | 3d | 2013-01-09 | 2013-01-24 | 10d | 16.12d |  |  | Md. Afzalur Rashid [30%] | 38.4h | 2.4h |
| 52 | 1.5.1 | Implement new layout in User | 3d | 2013-01-09 | 2013-01-14 |  |  |  |  |  | 16.12d |  |  | Md. Afzalur Rashid [30%] | 7.2h |  |
| 53 | 1.5.2 | Implement new layout in Student | 3d | 2013-01-09 | 2013-01-14 |  |  |  |  |  | 16.12d |  |  | Khadija Ashraf | 24h |  |
| 54 | 1.5.3 | Implement new layout in Fees Rule | 3h | 2013-01-09 | 2013-01-10 |  |  |  |  |  | 18.75d |  |  |  |  |  |
| 55 | 1.5.4 | Implement new layout in fees profile | 3h | 2013-01-09 | 2013-01-10 |  |  |  |  |  | 18.75d |  |  |  |  |  |
| 56 | 1.5.5 | Implement new layout in entire configuration menu | 3d | 2013-01-09 | 2013-01-14 |  |  |  |  |  | 16.12d |  |  |  |  |  |
| 57 | 1.5.6 | Implement new design in ACL except user | 2d | 2013-01-09 | 2013-01-13 |  |  |  |  |  | 17.12d |  |  |  |  |  |
| 58 | 1.6 | **Testing** | 19.75d | 2012-12-27 | 2013-01-24 |  |  | 2012-12-24 | 2013-01-23 | 19.75d | 9.25d |  |  |  | 206h |  |
| 59 | 1.6.1 | **Prepare Test Cases** | 19.75d | 2012-12-27 | 2013-01-24 |  |  | 2012-12-24 | 2013-01-23 | 19.75d | 9.25d |  |  |  | 134h |  |
| 60 | 1.6.1.1 | **Prepare Test Case for ACL** | 1.75d | 2012-12-27 | 2012-12-30 |  |  | 2012-12-24 | 2012-12-27 | 1.75d | 9.25d | 0d |  |  | 14h |  |
| 61 | 1.6.1.1.1 | Test case for User | 3h | 2012-12-27 | 2012-12-27 | 16 |  | 2012-12-24 | 2012-12-26 | 3h | 9.25d | 0d | start no earlier than 2012-12-27 | Kajjal Rekha | 3h |  |
| 62 | 1.6.1.1.2 | Test case for Authority | 3h | 2012-12-27 | 2012-12-27 | 61 |  | 2012-12-26 | 2012-12-26 | 3h | 9.25d | 0d |  | Kajjal Rekha | 3h |  |
| 63 | 1.6.1.1.3 | Test Case for login & authentication | 1d | 2012-12-27 | 2012-12-30 | 62 |  | 2012-12-26 | 2012-12-27 | 1d | 9.25d |  |  | Kajjal Rekha | 8h |  |
| 64 | 1.6.1.2 | **Prepare Test Case for School Management** | 2d | 2012-12-31 | 2013-01-02 |  |  | 2012-12-30 | 2013-01-01 | 2d | 9.25d | 0d |  |  | 16h |  |
| 65 | 1.6.1.2.1 | Test case for academic year/session | 1h | 2012-12-31 | 2012-12-31 | 85 |  | 2012-12-30 | 2012-12-30 | 1h | 9.25d | 0d |  | Kajjal Rekha | 1h |  |
| 66 | 1.6.1.2.2 | Test Case for School | 2h | 2012-12-31 | 2013-01-01 | 65 |  | 2012-12-30 | 2012-12-30 | 2h | 9.25d | 0d |  | Kajjal Rekha | 2h |  |
| 67 | 1.6.1.2.3 | Test Case for Fees profile | 5h | 2013-01-01 | 2013-01-01 | 66 |  | 2012-12-31 | 2012-12-31 | 5h | 9.25d | 0d |  | Kajjal Rekha | 5h |  |
| 68 | 1.6.1.2.4 | Test Case for Student Registration | 1d | 2013-01-01 | 2013-01-02 | 67 |  | 2012-12-31 | 2013-01-01 | 1d | 9.25d |  |  | Kajjal Rekha | 8h |  |
| 69 | 1.6.1.3 | **Prepare Test Cases for Web Service** | 3d | 2013-01-06 | 2013-01-09 |  |  | 2013-01-03 | 2013-01-08 | 3d | 9.25d | 0d |  |  | 24h |  |
| 70 | 1.6.1.3.1 | Test Case for Tuition fees web service | 1d | 2013-01-06 | 2013-01-07 | 86 |  | 2013-01-03 | 2013-01-06 | 1d | 9.25d | 0d |  | Kajjal Rekha | 8h |  |
| 71 | 1.6.1.3.2 | Test Case for Exam fee & other web service | 1d | 2013-01-07 | 2013-01-08 | 70 |  | 2013-01-06 | 2013-01-07 | 1d | 9.25d | 0d |  | Kajjal Rekha | 8h |  |
| 72 | 1.6.1.3.3 | Test Case for external usagable web service | 1d | 2013-01-08 | 2013-01-09 | 71 |  | 2013-01-07 | 2013-01-08 | 1d | 9.25d | 0d |  | Kajjal Rekha | 8h |  |
| 73 | 1.6.1.4 | **Prepare Test Case for reports** | 1d | 2013-01-09 | 2013-01-10 |  |  | 2013-01-08 | 2013-01-09 | 1d | 9.25d | 2d |  |  | 8h |  |
| 74 | 1.6.1.4.1 | Test Case for generic reports | 3h | 2013-01-09 | 2013-01-10 | 72 |  | 2013-01-08 | 2013-01-08 | 3h | 9.25d | 0d |  | Kajjal Rekha | 3h |  |
| 75 | 1.6.1.4.2 | Test case for teacher wise reports | 2h | 2013-01-10 | 2013-01-10 | 74 |  | 2013-01-09 | 2013-01-09 | 2h | 9.25d | 0d |  | Kajjal Rekha | 2h |  |
| 76 | 1.6.1.4.3 | Test Case for Student Registration Report | 3h | 2013-01-10 | 2013-01-10 | 75 |  | 2013-01-09 | 2013-01-09 | 3h | 9.25d | 0d |  | Kajjal Rekha | 3h |  |

| ID | WBS | Task | Duration | Start | Finish | Predecessors | Baseline start | Baseline finish | Baseline duration | Total slack | Free slack | Resources | Work |
| --- | --- | --- | --- | --- | --- | --- | --- | --- | --- | --- | --- | --- | --- |
| 77 | 1.6.1.5 | **Prepare Test Case for Dashboard** | 4d | 2013-01-10 | 2013-01-16 |  | 2013-01-09 | 2013-01-15 | 4d | 9.25d |  |  | 32h |
| 78 | 1.6.1.5.1 | Test Case for Admin Dashboard | 3h | 2013-01-10 | 2013-01-13 | 76 | 2013-01-09 | 2013-01-09 | 3h | 9.25d | 0d | Kajjal Rekha | 3h |
| 79 | 1.6.1.5.2 | Test Case for Teacher Dashboard | 3h | 2013-01-13 | 2013-01-13 | 78 | 2013-01-10 | 2013-01-10 | 3h | 9.25d | 0d | Kajjal Rekha | 3h |
| 80 | 1.6.1.5.3 | Test Case for Clerk Dahsboard | 2h | 2013-01-13 | 2013-01-13 | 79 | 2013-01-10 | 2013-01-10 | 2h | 9.25d | 0d | Kajjal Rekha | 2h |
| 81 | 1.6.1.5.4 | Test Case for Generic Dashboard | 1d | 2013-01-13 | 2013-01-14 | 80 | 2013-01-10 | 2013-01-13 | 1d | 9.25d | 0d | Kajjal Rekha | 8h |
| 82 | 1.6.1.5.5 | Test Case for Dashboard customization | 2d | 2013-01-14 | 2013-01-16 | 81 | 2013-01-13 | 2013-01-15 | 2d | 9.25d | 0d | Kajjal Rekha | 16h |
| 83 | 1.6.1.6 | Prepare Test Case for User Interface | 5d | 2013-01-16 | 2013-01-24 | 82 | 2013-01-15 | 2013-01-23 | 5d | 9.25d |  | Kajjal Rekha | 40h |
| 84 | 1.6.2 | **Perform Test for Phase** | 14d | 2012-12-30 | 2013-01-17 |  | 2012-12-27 | 2013-01-16 | 14d | 9.25d |  |  | 72h |
| 85 | 1.6.2.1 | Perform Test for ACL | 1d | 2012-12-30 | 2012-12-31 | 60 | 2012-12-27 | 2012-12-30 | 1d | 9.25d | 0d | Kajjal Rekha | 8h |
| 86 | 1.6.2.2 | Perform Test for School Management | 2d | 2013-01-02 | 2013-01-06 | 64 | 2013-01-01 | 2013-01-03 | 2d | 9.25d | 0d | Kajjal Rekha | 16h |
| 87 | 1.6.2.3 | Perform Test for Web Service | 3d | 2013-01-09 | 2013-01-14 | 69 | 2013-01-08 | 2013-01-13 | 3d | 13.25d | 0d | Nabila Nujhat | 24h |
| 88 | 1.6.2.4 | Perform Test For report | 3d | 2013-01-14 | 2013-01-17 | 73, 87 | 2013-01-13 | 2013-01-16 | 3d | 13.25d |  | Nabila Nujhat | 24h |
