# ProjectPlan-ProgotiSystems-AgraniSchoolPaymentManagement

Schedule from MS Project, 2012-12-01 to 2013-02-06, A marks actual dates.

## Calendars

- Progoti Systems Calendar: Mon-Thu 09:00-13:00, 14:00-18:00; Fri-Sat off; Sun 09:00-13:00, 14:00-18:00. Exceptions (off unless hours are given): 2012-12-16 to 2017-12-16 (Victory Day, recurring), 2012-12-25 to 2017-12-25 (Christmas, recurring), 2013-01-21 to 2018-01-21 (International Mother language Day, recurring).

## Resources

| Resource |
| --- |
| Md. Afzalur Rashid |
| Azom Shahriar |
| Khadija Ashraf |
| Sajidur Rahman |
| Abu Raihan |

## Schedule

| ID | WBS | Task | Duration | Start | Finish | Predecessors | Complete | Remaining | Total slack | Free slack | Constraint | Resources | Work | Actual work |
| --- | --- | --- | --- | --- | --- | --- | --- | --- | --- | --- | --- | --- | --- | --- |
| 1 | 1 | **Agrani School Payment Management System** | 46d | 2012-12-01 A | 2013-02-06 |  | 20% | 36.8d | 0d |  |  |  | 534.6h | 155.4h |
| 2 | 1.1 | Initiate project & preparation | 3d | 2012-12-01 A | 2012-12-04 A |  | 100% |  |  |  | start no earlier than 2012-12-05 | Azom Shahriar; Khadija Ashraf; Md. Afzalur Rashid [30%] | 55.2h | 55.2h |
| 3 | 1.2 | Domain creation & Database schema generation | 4d | 2012-12-05 A | 2012-12-10 A | 2 | 100% |  |  |  |  | Khadija Ashraf | 32h | 32h |
| 4 | 1.3 | Academic Year/Session Management | 1d | 2012-12-11 A | 2012-12-11 A | 3 | 100% |  |  |  |  | Khadija Ashraf | 8h | 8h |
| 5 | 1.4 | School Management | 1d | 2012-12-12 A | 2012-12-12 A | 4 | 100% |  |  |  |  | Khadija Ashraf | 8h | 8h |
| 6 | 1.5 | User Group Management | 1d | 2013-01-03 | 2013-01-06 | 20 |  |  | 22.52d |  |  | Khadija Ashraf | 8h |  |
| 7 | 1.6 | **User Management** | 5.62d | 2012-12-13 A | 2012-12-23 |  | 38% | 3.52d | 9.5d | 1d |  |  | 8h | 3h |
| 8 | 1.6.1 | Tuneup view | 3h | 2012-12-23 | 2012-12-23 | 23 |  |  | 9.5d | 0d | start no earlier than 2012-12-23 | Khadija Ashraf | 3h |  |
| 9 | 1.6.2 | Controller | 3h | 2012-12-13 A | 2012-12-13 A | 5 | 100% |  |  |  |  | Khadija Ashraf | 3h | 3h |
| 10 | 1.6.3 | Service | 2h | 2012-12-23 | 2012-12-23 | 8 |  |  | 9.5d | 0.38d |  | Khadija Ashraf | 2h |  |
| 11 | 1.7 | **Authority(Role) Management** | 6.62d | 2012-12-13 A | 2012-12-24 |  | 38% | 4.14d | 9.12d | 0d |  |  | 8h | 3h |
| 12 | 1.7.1 | View creation | 3h | 2012-12-24 | 2012-12-24 | 10 |  |  | 9.12d | 0d | start no earlier than 2012-12-24 | Khadija Ashraf | 3h |  |
| 13 | 1.7.2 | Controller | 3h | 2012-12-13 A | 2012-12-13 A | 9 | 100% |  |  |  |  | Khadija Ashraf | 3h | 3h |
| 14 | 1.7.3 | Service | 2h | 2012-12-24 | 2012-12-24 | 12 |  |  | 9.12d |  |  | Khadija Ashraf | 2h |  |
| 15 | 1.8 | Authority Assignment | 2h | 2012-12-24 | 2012-12-24 | 11, 7 |  |  | 9.12d | 0d |  | Khadija Ashraf | 2h |  |
| 16 | 1.9 | Feature Management | 2d | 2012-12-24 | 2012-12-27 | 2, 3, 15 |  |  | 9.12d | 0d |  | Md. Afzalur Rashid [30%] | 4.8h |  |
| 17 | 1.10 | Feature Assigment | 2d | 2012-12-27 | 2012-12-31 | 16 |  |  | 9.12d | 0d |  | Md. Afzalur Rashid [30%] | 4.8h |  |
| 18 | 1.11 | Class Management | 4h | 2012-12-17 A | 2012-12-17 A | 13 | 100% |  |  |  |  | Khadija Ashraf | 4h | 4h |
| 19 | 1.12 | Section Management | 3h | 2012-12-18 A | 2012-12-18 A | 18 | 100% |  |  |  |  | Khadija Ashraf | 3h | 3h |
| 20 | 1.13 | Subject Group management | 1d | 2013-01-02 | 2013-01-03 | 25 |  |  | 22.52d | 0d |  | Khadija Ashraf | 8h |  |
| 21 | 1.14 | **Fees Profile Management** | 11.47d | 2012-12-17 A | 2013-01-02 |  | 54% | 5.25d | 22.52d |  |  |  | 28h | 15.2h |
| 22 | 1.14.1 | Fees Type | 4h | 2012-12-19 A | 2012-12-19 A | 19 | 100% |  |  |  |  | Khadija Ashraf | 4h | 4h |
| 23 | 1.14.2 | Fees Rule | 4h | 2012-12-19 A | 2012-12-19 A | 22 | 100% |  |  |  |  | Khadija Ashraf | 4h | 4h |
| 24 | 1.14.3 | Fees Profile | 4h | 2012-12-20 A | 2012-12-20 A | 23 | 100% |  |  |  |  | Khadija Ashraf | 4h | 4h |
| 25 | 1.14.4 | Fees Profile Allocation | 2d | 2012-12-17 A | 2013-01-02 | 28 | 20% | 1.6d | 22.52d | 0d |  | Khadija Ashraf | 16h | 3.2h |

| ID | WBS | Task | Duration | Start | Finish | Predecessors | Complete | Remaining | Total slack | Free slack | Constraint | Resources | Work | Actual work |
| --- | --- | --- | --- | --- | --- | --- | --- | --- | --- | --- | --- | --- | --- | --- |
| 26 | 1.15 | **Student Management** | 11d | 2012-12-24 | 2013-01-09 |  |  |  | 9.12d |  |  |  | 48.8h |  |
| 27 | 1.15.1 | Student Registration | 2d | 2012-12-24 | 2012-12-27 | 15 |  |  | 9.12d | 0d |  | Khadija Ashraf | 16h |  |
| 28 | 1.15.2 | Class,Section,Fees Profile assignment | 2d | 2012-12-27 | 2012-12-31 | 27 |  |  | 9.12d | 0d |  | Khadija Ashraf | 16h |  |
| 29 | 1.15.3 | **Migration** | 7d | 2012-12-31 | 2013-01-09 |  |  |  | 9.12d |  |  |  | 16.8h |  |
| 30 | 1.15.3.1 | Individual Student migration | 2d | 2012-12-31 | 2013-01-02 | 17, 28 |  |  | 9.12d | 0d |  | Md. Afzalur Rashid [30%] | 4.8h |  |
| 31 | 1.15.3.2 | Groupwise migration | 5d | 2013-01-02 | 2013-01-09 | 30 |  |  | 9.12d | 0d |  | Md. Afzalur Rashid [30%] | 12h |  |
| 32 | 1.16 | **RESTFul Webservice Management** | 13d | 2012-12-18 A | 2013-01-06 |  | 23% | 10d | 0d |  |  |  | 104h | 24h |
| 33 | 1.16.1 | Setup project and Preparation | 3d | 2012-12-18 A | 2012-12-20 A |  | 100% |  |  |  | start no earlier than 2012-12-18 | Azom Shahriar | 24h | 24h |
| 34 | 1.16.2 | Webservice for tuition fees payment | 2d | 2012-12-23 | 2012-12-24 | 33 |  |  | 0d |  |  | Azom Shahriar | 16h |  |
| 35 | 1.16.3 | Web service for other fees payment | 1d | 2012-12-26 | 2012-12-26 | 34 |  |  | 0d |  |  | Azom Shahriar | 8h |  |
| 36 | 1.16.4 | Fine management | 2d | 2012-12-27 | 2012-12-30 | 35 |  |  | 0d |  |  | Azom Shahriar | 16h |  |
| 37 | 1.16.5 | Web service for external component / transaction report | 5d | 2012-12-31 | 2013-01-06 | 36 |  |  | 0d |  |  | Azom Shahriar | 40h |  |
| 38 | 1.17 | **Dashboard management** | 15d | 2013-01-16 | 2013-02-06 |  |  |  | 0d |  |  |  | 120h |  |
| 39 | 1.17.1 | CSS & Layout Management | 3d | 2013-01-16 | 2013-01-20 | 49 |  |  | 0d |  |  | Azom Shahriar | 24h |  |
| 40 | 1.17.2 | Admin dashboard amanagement | 2d | 2013-01-22 | 2013-01-23 | 39 |  |  | 0d |  |  | Azom Shahriar | 16h |  |
| 41 | 1.17.3 | Teacher & Employee Dashboard | 2d | 2013-01-24 | 2013-01-27 | 40 |  |  | 0d |  |  | Azom Shahriar | 16h |  |
| 42 | 1.17.4 | Clerk dashboard | 1d | 2013-01-28 | 2013-01-28 | 41 |  |  | 0d |  |  | Azom Shahriar | 8h |  |
| 43 | 1.17.5 | Generic Dashboard | 4d | 2013-01-29 | 2013-02-03 | 42 |  |  | 0d |  |  | Azom Shahriar | 32h |  |
| 44 | 1.17.6 | Dashboard Customization | 3d | 2013-02-04 | 2013-02-06 | 43 |  |  | 0d |  |  | Azom Shahriar | 24h |  |
| 45 | 1.18 | **Reports** | 7d | 2013-01-07 | 2013-01-15 |  |  |  | 0d |  |  |  | 56h |  |
| 46 | 1.18.1 | Generic Report based on Group,Section,Class,Student, fees type and duration | 4d | 2013-01-07 | 2013-01-10 | 37 |  |  | 0d |  |  | Azom Shahriar | 32h |  |
| 47 | 1.18.2 | Monthwise fees collection report | 1d | 2013-01-13 | 2013-01-13 | 46 |  |  | 0d |  |  | Azom Shahriar | 8h |  |
| 48 | 1.18.3 | Monthwise due report | 1d | 2013-01-14 | 2013-01-14 | 47 |  |  | 0d |  |  | Azom Shahriar | 8h |  |
| 49 | 1.18.4 | Student Registration Report | 1d | 2013-01-15 | 2013-01-15 | 48 |  |  | 0d |  |  | Azom Shahriar | 8h |  |
| 50 | 1.19 | Design customization & CSS Implementation | 10d | 2013-01-09 | 2013-01-24 | 31 |  |  | 9.12d |  |  | Md. Afzalur Rashid [30%] | 24h |  |
